# Simple MRP Plan V1.4 for Test

Schedule from MS Project, 2010-10-18 to 2011-02-24, A marks actual dates.
truemove

## Calendars

- Standard: Mon-Fri 08:00-12:00, 13:00-17:00; Sat-Sun off.

## Resources

| Resource |
| --- |
| Golf |
| Jook |
| Dang |
| Tam |
| Pom |
| g |
| t |
| d |
| j |

## Schedule

| ID | WBS | Task | Duration | Start | Finish | Predecessors | Complete | Baseline start | Baseline finish | Baseline duration | Constraint | Resources | Work | Actual work |
| --- | --- | --- | --- | --- | --- | --- | --- | --- | --- | --- | --- | --- | --- | --- |
| 1 | 1 | Development | 92d? | 2010-10-18 A | 2011-02-22 A |  | 100% | 2010-10-18 | 2011-02-22 | 92d? | start no earlier than 2010-10-18 | Golf; Jook; Dang; Tam | 2944h | 2944h |
| 2 | 2 | **Test Plan** | 62.5d? | 2010-11-30 A | 2011-02-24 A |  | 100% | 2010-11-05 | 2011-02-23 | 79d? |  |  | 5256h | 5256h |
| 3 | 2.1 | จัดทำเอกสาร Test Plan | 61.5d? | 2010-11-30 A | 2011-02-23 A |  | 100% | 2010-11-05 | 2010-11-26 | 16d? | start no earlier than 2010-11-30 | Pom | 492h | 492h |
| 4 | 2.2 | จัดทำเอกสาร Software Design Document | 43.5d? | 2010-12-06 A | 2011-02-03 A |  | 100% | 2010-11-22 | 2010-11-30 | 7d? | start no earlier than 2010-12-06 | Pom | 348h | 348h |
| 5 | 2.3 | **Unit Test** | 57d | 2010-12-07 A | 2011-02-23 A |  | 100% | 2010-12-06 | 2011-02-23 | 58d |  |  | 4128h | 4128h |
| 6 | 2.3.1 | จัดทำเอกสาร Unit Test | 30d | 2011-01-12 A | 2011-02-22 A |  | 100% | 2011-01-10 | 2011-01-13 | 4d | start no earlier than 2011-01-12 | Pom; Tam | 480h | 480h |
| 7 | 2.3.2 | **ดำเนินการ Unit Test** | 57d | 2010-12-07 A | 2011-02-23 A |  | 100% | 2010-12-06 | 2011-02-23 | 58d |  | Golf; Jook; Tam; Dang; Pom | 3568h | 3568h |
| 8 | 2.3.2.1 | **Master** | 31d | 2010-12-07 A | 2011-01-18 A |  | 100% | 2010-12-06 | 2011-01-18 | 32d |  |  | 144h | 144h |
| 9 | 2.3.2.1.1 | Product Code | 5d | 2011-01-06 A | 2011-01-12 A |  | 100% | 2011-01-05 | 2011-01-11 | 5d | start no earlier than 2011-01-06 | Tam | 40h | 40h |
| 10 | 2.3.2.1.2 | Unit of Measurement | 6d | 2011-01-11 A | 2011-01-18 A |  | 100% | 2011-01-11 | 2011-01-18 | 6d | start no earlier than 2011-01-11 | Tam | 48h | 48h |
| 11 | 2.3.2.1.3 | Item | 7d | 2010-12-07 A | 2010-12-15 A |  | 100% | 2010-12-06 | 2010-12-14 | 7d | start no earlier than 2010-12-07 | Golf | 56h | 56h |
| 12 | 2.3.2.2 | **Customer** | 29d | 2010-12-15 A | 2011-01-24 A |  | 100% | 2010-12-15 | 2011-01-24 | 29d |  |  | 160h | 160h |
| 13 | 2.3.2.2.1 | **Master** | 29d | 2010-12-15 A | 2011-01-24 A |  | 100% | 2010-12-15 | 2011-01-24 | 29d |  |  | 80h | 80h |
| 14 | 2.3.2.2.1.1 | Customer | 5d | 2010-12-15 A | 2010-12-21 A |  | 100% | 2010-12-15 | 2010-12-21 | 5d | start no earlier than 2010-12-15 | Golf | 40h | 40h |
| 15 | 2.3.2.2.1.2 | Sales Person | 5d | 2011-01-18 A | 2011-01-24 A |  | 100% | 2011-01-18 | 2011-01-24 | 5d | start no earlier than 2011-01-18 | Tam | 40h | 40h |
| 16 | 2.3.2.2.2 | **Activities** | 10d | 2010-12-22 A | 2011-01-04 A |  | 100% | 2010-12-22 | 2011-01-04 | 10d |  |  | 80h | 80h |
| 17 | 2.3.2.2.2.1 | Customer Order | 10d | 2010-12-22 A | 2011-01-04 A |  | 100% | 2010-12-22 | 2011-01-04 | 10d | start no earlier than 2010-12-22 | Golf | 80h | 80h |
| 18 | 2.3.2.3 | **Purchase** | 25d | 2011-01-04 A | 2011-02-07 A |  | 100% | 2011-01-04 | 2011-02-07 | 25d |  |  | 192h | 192h |
| 19 | 2.3.2.3.1 | **Master** | 5d | 2011-02-01 A | 2011-02-07 A |  | 100% | 2011-02-01 | 2011-02-07 | 5d |  |  | 40h | 40h |
| 20 | 2.3.2.3.1.1 | Vender | 5d | 2011-02-01 A | 2011-02-07 A |  | 100% | 2011-02-01 | 2011-02-07 | 5d | start no earlier than 2011-02-01 | Dang | 40h | 40h |
| 21 | 2.3.2.3.2 | **Activities** | 19d | 2011-01-04 A | 2011-01-28 A |  | 100% | 2011-01-04 | 2011-01-26 | 17d |  |  | 152h | 152h |
| 22 | 2.3.2.3.2.1 | Purchase Requisition | 9d | 2011-01-04 A | 2011-01-14 A |  | 100% | 2011-01-04 | 2011-01-13 | 8d | start no earlier than 2011-01-04 | Golf | 72h | 72h |
| 23 | 2.3.2.3.2.2 | Purchase Order | 10d | 2011-01-17 A | 2011-01-28 A | 22 | 100% | 2011-01-14 | 2011-01-26 | 9d |  | Golf | 80h | 80h |
| 24 | 2.3.2.4 | **Planning and Production** | 45d | 2010-12-22 A | 2011-02-22 A |  | 100% | 2010-12-22 | 2011-02-22 | 45d |  |  | 320h | 320h |
| 25 | 2.3.2.4.1 | **Master** | 3d | 2011-01-24 A | 2011-01-26 A |  | 100% | 2011-01-24 | 2011-01-26 | 3d |  |  | 24h | 24h |
| 26 | 2.3.2.4.1.1 | Work Center | 3d | 2011-01-24 A | 2011-01-26 A |  | 100% | 2011-01-24 | 2011-01-26 | 3d | start no earlier than 2011-01-24 | Tam | 24h | 24h |

| ID | WBS | Task | Duration | Start | Finish | Predecessors | Complete | Baseline start | Baseline finish | Baseline duration | Constraint | Resources | Work | Actual work |
| --- | --- | --- | --- | --- | --- | --- | --- | --- | --- | --- | --- | --- | --- | --- |
| 27 | 2.3.2.4.2 | **Activities** | 45d | 2010-12-22 A | 2011-02-22 A |  | 100% | 2010-12-22 | 2011-02-22 | 45d |  |  | 296h | 296h |
| 28 | 2.3.2.4.2.1 | Item Demand Forecash | 8d | 2010-12-22 A | 2010-12-31 A |  | 100% | 2010-12-22 | 2010-12-31 | 8d | start no earlier than 2010-12-22 | Jook | 64h | 64h |
| 29 | 2.3.2.4.2.2 | Bill of Material | 9d | 2011-01-27 A | 2011-02-08 A |  | 100% | 2011-01-27 | 2011-02-08 | 9d | start no earlier than 2011-01-27 | Golf | 72h | 72h |
| 30 | 2.3.2.4.2.3 | Master Plan Schedule | 10d | 2011-02-09 A | 2011-02-22 A | 29 | 100% | 2011-02-09 | 2011-02-22 | 10d |  | Golf | 80h | 80h |
| 31 | 2.3.2.4.2.4 | Job Order | 10d | 2011-01-05 A | 2011-01-18 A |  | 100% | 2011-01-05 | 2011-01-14 | 8d | start no earlier than 2011-01-05 | Jook | 80h | 80h |
| 32 | 2.3.2.5 | **Inventory** | 27d | 2011-01-17 A | 2011-02-22 A |  | 100% | 2011-01-17 | 2011-02-22 | 27d |  |  | 440h | 440h |
| 33 | 2.3.2.5.1 | **Master** | 10d | 2011-01-27 A | 2011-02-09 A |  | 100% | 2011-01-27 | 2011-02-09 | 10d |  |  | 80h | 80h |
| 34 | 2.3.2.5.1.1 | Warehouse | 5d | 2011-01-27 A | 2011-02-02 A |  | 100% | 2011-01-27 | 2011-02-02 | 5d | start no earlier than 2011-01-27 | Tam | 40h | 40h |
| 35 | 2.3.2.5.1.2 | Location | 5d | 2011-02-03 A | 2011-02-09 A | 34 | 100% | 2011-02-03 | 2011-02-09 | 5d |  | Tam | 40h | 40h |
| 36 | 2.3.2.5.2 | **Activities** | 27d | 2011-01-17 A | 2011-02-22 A |  | 100% | 2011-01-17 | 2011-02-22 | 27d |  |  | 336h | 336h |
| 37 | 2.3.2.5.2.1 | Item Location | 10d | 2011-01-17 A | 2011-01-28 A |  | 100% | 2011-01-17 | 2011-01-28 | 10d | start no earlier than 2011-01-17 | Jook | 80h | 80h |
| 38 | 2.3.2.5.2.2 | Customer Order Shipping | 9d | 2011-01-31 A | 2011-02-10 A | 37 | 100% | 2011-01-31 | 2011-02-09 | 8d |  | Jook | 72h | 72h |
| 39 | 2.3.2.5.2.3 | Purchase Order Receipt | 8d | 2011-02-09 A | 2011-02-18 A |  | 100% | 2011-02-09 | 2011-02-18 | 8d | start no earlier than 2011-02-09 | Jook | 64h | 64h |
| 40 | 2.3.2.5.2.4 | Job Order Receive | 10d | 2011-02-09 A | 2011-02-22 A |  | 100% | 2011-02-09 | 2011-02-22 | 10d | start no earlier than 2011-02-09 | Jook | 80h | 80h |
| 41 | 2.3.2.5.2.5 | Material to Job | 5d | 2011-02-01 A | 2011-02-07 A |  | 100% | 2011-02-01 | 2011-02-07 | 5d | start no earlier than 2011-02-01 | Jook | 40h | 40h |
| 42 | 2.3.2.5.3 | **Report** | 3d | 2011-02-10 A | 2011-02-14 A |  | 100% | 2011-02-10 | 2011-02-14 | 3d |  |  | 24h | 24h |
| 43 | 2.3.2.5.3.1 | Print Transaction | 3d | 2011-02-10 A | 2011-02-14 A |  | 100% | 2011-02-10 | 2011-02-14 | 3d | start no earlier than 2011-02-10 | Tam | 24h | 24h |
| 44 | 2.3.2.6 | **System** | 4d | 2011-02-18 A | 2011-02-23 A |  | 100% | 2011-02-18 | 2011-02-23 | 4d |  |  | 32h | 32h |
| 45 | 2.3.2.6.1 | Change Password | 4d | 2011-02-18 A | 2011-02-23 A |  | 100% | 2011-02-18 | 2011-02-23 | 4d | start no earlier than 2011-02-18 | Dang | 32h | 32h |
| 46 | 2.3.3 | **Functional Test** | 4d | 2011-02-18 A | 2011-02-23 A |  | 100% | 2011-02-01 | 2011-02-03 | 3d |  |  | 80h | 80h |
| 47 | 2.3.3.1 | Approve PR | 3d | 2011-02-21 A | 2011-02-23 A |  | 100% | 2011-02-01 | 2011-02-03 | 3d | start no earlier than 2011-02-21 | Jook | 24h | 24h |
| 48 | 2.3.3.2 | Release Job | 4d | 2011-02-18 A | 2011-02-23 A |  | 100% | 2011-02-01 | 2011-02-03 | 3d | start no earlier than 2011-02-18 | Tam | 32h | 32h |
| 49 | 2.3.3.3 | Generate Job | 3d | 2011-02-21 A | 2011-02-23 A |  | 100% | 2011-02-01 | 2011-02-03 | 3d | start no earlier than 2011-02-21 | Golf | 24h | 24h |
| 50 | 2.4 | **Integration Test** | 12.5d? | 2011-02-08 A | 2011-02-24 A |  | 100% | 2011-02-01 | 2011-02-11 | 9d? |  |  | 288h | 288h |
| 51 | 2.4.1 | จัดทำเอกสาร Integration Test | 12.5d | 2011-02-08 A | 2011-02-24 A |  | 100% | 2011-02-04 | 2011-02-11 | 6d | finish no earlier than 2011-02-23 | Pom; Tam | 200h | 200h |

| ID | WBS | Task | Duration | Start | Finish | Predecessors | Complete | Baseline start | Baseline finish | Baseline duration | Constraint | Resources | Work | Actual work |
| --- | --- | --- | --- | --- | --- | --- | --- | --- | --- | --- | --- | --- | --- | --- |
| 52 | 2.4.2 | **ดำเนินการ Integration Test** | 3d? | 2011-02-21 A | 2011-02-23 A |  | 100% | 2011-02-01 | 2011-02-01 | 1d? |  | Pom; Tam | 88h | 88h |
| 53 | 2.4.2.1 | Master | 1d? | 2011-02-21 A | 2011-02-21 A |  | 100% | 2011-02-01 | 2011-02-01 | 1d? | start no earlier than 2011-02-21 | Pom | 8h | 8h |
| 54 | 2.4.2.2 | Customer | 1d? | 2011-02-21 A | 2011-02-21 A |  | 100% | 2011-02-01 | 2011-02-01 | 1d? | start no earlier than 2011-02-21 | Tam | 8h | 8h |
| 55 | 2.4.2.3 | Purchase | 1d? | 2011-02-22 A | 2011-02-22 A | 54 | 100% | 2011-02-01 | 2011-02-01 | 1d? |  | Pom | 8h | 8h |
| 56 | 2.4.2.4 | Planning and Production | 1d? | 2011-02-23 A | 2011-02-23 A | 55 | 100% | 2011-02-01 | 2011-02-01 | 1d? |  | Tam | 8h | 8h |
| 57 | 2.4.2.5 | Inventory | 1d? | 2011-02-23 A | 2011-02-23 A |  | 100% | 2011-02-01 | 2011-02-01 | 1d? | start no earlier than 2011-02-23 | Tam | 8h | 8h |
